| TaskID | TaskName | Duration | DurationUnit | Progress | StartDate | EndDate | resources | Predecessor |
| --- | --- | --- | --- | --- | --- | --- | --- | --- |
| 1 | Planning | 15 | day | 25 | 2022-09-19T01:00:00.000Z | 2022-10-03T10:00:00.000Z | Manager+Analyst Manager+Analyst 100 |  |
| 7 | · Analysis: Master | 15 | day | 0 | 2022-09-19T01:00:00.000Z | 2022-10-03T10:00:00.000Z | Manager+Analyst Manager+Analyst 100 |  |
| 8 | · Analysis: Player | 15 | day | 0 | 2022-09-19T01:00:00.000Z | 2022-10-03T10:00:00.000Z | Analyst+Devops Analyst+Devops 100 | 7SS |
| 9 | · Analysis: Features | 15 | day | 0 | 2022-09-19T01:00:00.000Z | 2022-10-03T10:00:00.000Z | Analyst+Android-2 Analyst+Android-2 100 | 7SS |
| 10 | · Analysis: Equipment | 15 | day | 100 | 2022-09-19T01:00:00.000Z | 2022-10-03T10:00:00.000Z | Analyst+Android-1 Analyst+Android-1 100 | 7SS |
| 2 | Iteration 1: System | 38 | day | 0 | 2022-10-06T01:00:00.000Z | 2022-11-12T10:00:00.000Z | Manager+Analyst Manager+Analyst 100 |  |
| 11 | · Описание API & Entities: Система | 9 | day | 0 | 2022-10-08T01:00:00.000Z | 2022-10-16T10:00:00.000Z | Architect+Backend Architect+Backend 100 |  |
| 13 | · Проектирование мокапов для управления системами | 6 | day | 0 | 2022-10-08T01:00:00.000Z | 2022-10-13T10:00:00.000Z | Android+Designer Android+Designer 100 |  |
| 25 | · Мокапы: основное активити | 8 | day | 0 | 2022-10-14T01:00:00.000Z | 2022-10-21T10:00:00.000Z | Analyst+Android-1 Analyst+Android-1 100 | 13FS |
| 14 | · Мокапы: управление предметами тегами | 14 | day | 0 | 2022-10-14T01:00:00.000Z | 2022-10-27T10:00:00.000Z | Analyst+Android-2 Analyst+Android-2 100 | 13FS |
| 22 | · Мокапы: управление параметрами и свойствами | 14 | day | 0 | 2022-10-14T01:00:00.000Z | 2022-10-27T10:00:00.000Z | Android Android 100 | 13FS |
| 26 | · Callbacks: основное активити | 8 | day | 0 | 2022-10-24T01:00:00.000Z | 2022-10-31T10:00:00.000Z | Analyst+Android-1 Analyst+Android-1 100 | 25FS+2 days,11FS+2 days |
| 15 | · Callbacks: управление предметами и тегами | 8 | day | 0 | 2022-10-30T01:00:00.000Z | 2022-11-06T10:00:00.000Z | Analyst+Android-2 Analyst+Android-2 100 | 11FS+2 days,14FS+2 days |
| 27 | · Callbacks: управление параметрами и свойствами | 8 | day | 0 | 2022-10-30T01:00:00.000Z | 2022-11-06T10:00:00.000Z | Android Android 100 | 22FS+2 days,11FS+2 days |
| 29 | · Интеграция сервера: система | 4 | day | 0 | 2022-11-09T01:00:00.000Z | 2022-11-12T10:00:00.000Z | Backend-2 Backend-2 100 | 16SS |
| 16 | · Интеграция фронта: система | 4 | day | 0 | 2022-11-09T01:00:00.000Z | 2022-11-12T10:00:00.000Z | Analyst+Android-1 Analyst+Android-1 100 | 20FS+2 days,15FS+2 days,26FS+2 days,27FS+2 days,21FS+2 days |
| 17 | · Интеграция: тестирование | 4 | day | 0 | 2022-11-09T01:00:00.000Z | 2022-11-12T10:00:00.000Z | QA QA 100 | 16SS |
| 18 | · Предоставление тестового окружения | 7 | day | 0 | 2022-10-06T01:00:00.000Z | 2022-10-12T10:00:00.000Z | Analyst+Devops Analyst+Devops 100 | 11SS-2 days |
| 19 | · Базовый сервер | 3 | day | 0 | 2022-10-13T01:00:00.000Z | 2022-10-15T10:00:00.000Z | Backend-2 Backend-2 100 | 18FS |
| 20 | · Server: предметы и теги | 18 | day | 0 | 2022-10-19T01:00:00.000Z | 2022-11-05T10:00:00.000Z | Backend-1 Backend-1 100 | 19FS,11FS+2 days |
| 21 | · Server: системы и параметры | 18 | day | 0 | 2022-10-19T01:00:00.000Z | 2022-11-05T10:00:00.000Z | Backend-2 Backend-2 100 | 11FS+2 days |
| 31 | Iteration 2: Player, Equipment, Account, Search | 62 | day | 0 | 2022-10-27T01:00:00.000Z | 2022-12-28T01:00:00.000Z | Manager+Analyst Manager+Analyst 100 |  |
| 64 | · Описание стратегии тестирования | 14 | day | 0 | 2022-11-13T01:00:00.000Z | 2022-11-26T10:00:00.000Z |  | 17FS |
| 30 | · Описание API и Entities: Игрок | 13 | day | 0 | 2022-10-31T01:00:00.000Z | 2022-11-12T10:00:00.000Z | Architect+Backend Architect+Backend 100 |  |
| 32 | · Доанализ требований: Игрок | 17 | day | 0 | 2022-10-27T01:00:00.000Z | 2022-11-12T10:00:00.000Z | Analyst+Devops Analyst+Devops 100 |  |
| 33 | · Проектирование мокапов для управления персонажем | 9 | day | 0 | 2022-10-29T01:00:00.000Z | 2022-11-06T10:00:00.000Z | Android+Designer Android+Designer 100 |  |
| 34 | · Мокапы: персонаж | 19 | day | 0 | 2022-11-13T01:00:00.000Z | 2022-12-01T10:00:00.000Z | Analyst+Android-1 Analyst+Android-1 100 | 33FS+2 days,16FS |
| 36 | · Мокапы: снаряжение | 19 | day | 0 | 2022-11-13T01:00:00.000Z | 2022-12-01T10:00:00.000Z | Analyst+Android-2 Analyst+Android-2 100 | 33FS+2 days,16FS |
| 35 | · Мокапы: аккаунт | 19 | day | 0 | 2022-11-13T01:00:00.000Z | 2022-12-01T10:00:00.000Z | Android Android 100 | 33FS+2 days,16FS |
| 40 | · Callbacks: персонаж | 8 | day | 0 | 2022-11-24T01:00:00.000Z | 2022-12-01T10:00:00.000Z | Analyst+Android-1 Analyst+Android-1 100 |  |
| 39 | · Callbacks: снаряжение | 8 | day | 0 | 2022-11-24T01:00:00.000Z | 2022-12-01T10:00:00.000Z | Analyst+Android-2 Analyst+Android-2 100 |  |
| 38 | · Calbacks: аккаунт | 8 | day | 0 | 2022-11-24T01:00:00.000Z | 2022-12-01T10:00:00.000Z | Android Android 100 |  |
| 43 | · Интеграция сервера: игрок | 4 | day | 0 | 2022-12-04T01:00:00.000Z | 2022-12-07T10:00:00.000Z | Backend-2 Backend-2 100 | 42SS |
| 42 | · Интеграция фронта: игрок | 4 | day | 0 | 2022-12-04T01:00:00.000Z | 2022-12-07T10:00:00.000Z | Analyst+Android-1 Analyst+Android-1 100 | 40FS+2 days,39FS+2 days,38FS+2 days,45FS,44FS |
| 41 | · Интеграция: тестирование | 4 | day | 0 | 2022-12-04T01:00:00.000Z | 2022-12-07T10:00:00.000Z | QA QA 100 | 42SS |
| 45 | · Server: Игрок и снаряжение | 14 | day | 0 | 2022-11-13T01:00:00.000Z | 2022-11-26T10:00:00.000Z | Backend-2 Backend-2 100 | 30FS |
| 44 | · Server: аккаунт и поиск | 14 | day | 0 | 2022-11-13T01:00:00.000Z | 2022-11-26T10:00:00.000Z | Backend-1 Backend-1 100 | 30FS |
| 46 | · Iteration 3: Minor requirements [CANCELLED] | 43 | day | 0 | 2022-11-15T01:00:00.000Z | 2022-12-28T01:00:00.000Z | Manager+Analyst Manager+Analyst 100 |  |
| 47 | · · Доанализ и отбор требований | 7 | day | 0 | 2022-11-15T01:00:00.000Z | 2022-11-21T10:00:00.000Z | Analyst+Devops Analyst+Devops 100, Manager+Analyst Manager+Analyst 100 |  |
| 49 | · · Описание API & Entities: все остальное | 7 | day | 0 | 2022-11-23T01:00:00.000Z | 2022-11-29T10:00:00.000Z | Analyst+Devops Analyst+Devops 100 | 47FS+1 day |
| 48 | · · Проектирование мокапов: все остальное | 7 | day | 0 | 2022-11-23T01:00:00.000Z | 2022-11-29T10:00:00.000Z | Android+Designer Android+Designer 100 | 47FS+1 day |
| 52 | · · Мокапы: 1 | 5 | day | 0 | 2022-12-01T01:00:00.000Z | 2022-12-05T10:00:00.000Z | Analyst+Android-1 Analyst+Android-1 100 | 48FS+1 day |
| 51 | · · Мокапы: 2 | 5 | day | 0 | 2022-12-01T01:00:00.000Z | 2022-12-05T10:00:00.000Z | Analyst+Android-2 Analyst+Android-2 100 | 48FS+1 day |
| 50 | · · Мокапы: 3 | 5 | day | 0 | 2022-12-01T01:00:00.000Z | 2022-12-05T10:00:00.000Z | Analyst+Devops Analyst+Devops 100 | 48FS+1 day |
| 53 | · · Мокапы: 4 | 5 | day | 0 | 2022-12-01T01:00:00.000Z | 2022-12-05T10:00:00.000Z | Android Android 100 | 48FS+1 day |
| 58 | · · Callbacks: 1 | 7 | day | 0 | 2022-12-06T01:00:00.000Z | 2022-12-12T10:00:00.000Z | Analyst+Android-1 Analyst+Android-1 100 | 52FS |
| 57 | · · Callbacks: 2 | 7 | day | 0 | 2022-12-06T01:00:00.000Z | 2022-12-12T10:00:00.000Z | Analyst+Android-2 Analyst+Android-2 100 | 51FS |
| 56 | · · Callbacks: 3 | 7 | day | 0 | 2022-12-06T01:00:00.000Z | 2022-12-12T10:00:00.000Z | Analyst+Devops Analyst+Devops 100 | 50FS |
| 55 | · · Callbacks: 4 | 7 | day | 0 | 2022-12-06T01:00:00.000Z | 2022-12-12T10:00:00.000Z | Android Android 100 | 53FS |
| 54 | · · Интеграция сервера: все остальное | 7 | day | 0 | 2022-12-13T01:00:00.000Z | 2022-12-19T10:00:00.000Z | Backend-2 Backend-2 100 | 61SS |
| 61 | · · Интеграция клиента: все остальное | 7 | day | 0 | 2022-12-13T01:00:00.000Z | 2022-12-19T10:00:00.000Z | Analyst+Android-1 Analyst+Android-1 100 | 58FS,57FS,56FS,55FS,59FS |
| 60 | · · Интеграция: тестирование | 7 | day | 0 | 2022-12-13T01:00:00.000Z | 2022-12-19T10:00:00.000Z | QA QA 100 | 61SS |
| 59 | · · Server: 1 | 12 | day | 0 | 2022-11-30T01:00:00.000Z | 2022-12-11T10:00:00.000Z | Backend-1 Backend-1 100 | 49FS |
| 62 | · · Server: 2 | 12 | day | 0 | 2022-11-30T01:00:00.000Z | 2022-12-11T10:00:00.000Z | Backend-2 Backend-2 100 | 49FS |
| 63 | · · Deadline | 0 | day | 0 | 2022-12-28T01:00:00.000Z | 2022-12-28T01:00:00.000Z |  |  |
| 65 | Iteration 3.0: Stabilisation | 25 | day | 0 | 2022-12-02T01:00:00.000Z | 2022-12-26T10:00:00.000Z |  |  |
| 66 | · Настройка запускаемости приложения | 3 | day | 0 | 2022-12-02T01:00:00.000Z | 2022-12-04T10:00:00.000Z | Analyst+Android-1 Analyst+Android-1 100, Analyst+Android-2 Analyst+Android-2 100, Analyst+Devops Analyst+Devops 100, Android+Designer Android+Designer 100, Android Android 100, Architect+Backend Architect+Backend 100, Backend-1 Backend-1 100, Backend-2 Backend-2 100, Manager+Analyst Manager+Analyst 100, QA QA 100 | 36FS |
| 67 | · Стабилизация: исправления | 22 | day | 0 | 2022-12-05T01:00:00.000Z | 2022-12-26T10:00:00.000Z |  | 66FS |
| 69 | · Стабилизация: функциональное тестирование | 22 | day | 0 | 2022-12-05T01:00:00.000Z | 2022-12-26T10:00:00.000Z |  | 66FS |
| 71 | · Подготовка тестовых данных | 2 | day | 0 | 2022-12-05T01:00:00.000Z | 2022-12-06T10:00:00.000Z | QA QA 100 | 64FS+8 days |
| 68 | · Стабилизация: тестирование ui/ux | 22 | day | 0 | 2022-12-05T01:00:00.000Z | 2022-12-26T10:00:00.000Z |  | 66FS |
| 70 | · Стабилизация: тестирование сервера | 22 | day | 0 | 2022-12-05T01:00:00.000Z | 2022-12-26T10:00:00.000Z |  | 66FS |
